# BLUEsatProjectPlan

How a schedule from MS Project changed from version to version. A marks actual dates.

## Version 1 (saved 2012-01-14)

Note of the change: added BLUEsatProjectPlan.mpp

| ID | WBS | Task | Duration | Start | Finish | Total float | Constraint |
| --- | --- | --- | --- | --- | --- | --- | --- |
| 1 | 1 | **Documentation** | 411.38d | 2012-01-14 | 2013-02-28 |  | as late as possible |
| 2 |  | <New Task> | 0.33d | 2013-02-28 | 2013-02-28 |  |  |
| 3 | 2 | **Design, Testing and Analysis** | 30w | 2012-01-14 | 2012-08-11 |  | as late as possible |
| 4 |  | <New Task> | 1d | 2012-08-10 | 2012-08-11 |  |  |
| 5 | 2.2 | **Integration Rig (Flatsat)** | 41.38d | 2012-01-14 | 2012-02-24 |  | as late as possible |
| 6 |  | <New Task> | 0.33d | 2012-02-24 | 2012-02-24 |  |  |
| 7 | 2.3 | **Feasbility Investigation** | 3w | 2012-07-21 | 2012-08-11 |  | as late as possible |
| 8 |  | <New Task> | 1d | 2012-08-10 | 2012-08-11 |  |  |
| 9 | 2.4 | **Design Finalisation** | 3w | 2012-07-21 | 2012-08-11 |  | as late as possible |
| 10 |  | <New Task> | 1d | 2012-08-10 | 2012-08-11 |  |  |
| 11 |  | Testing and Evaluation | 3w | 2012-07-21 | 2012-08-11 |  | as late as possible |
| 13 | 2.6 | **Simulation** | 3w | 2012-07-21 | 2012-08-11 |  | as late as possible |
| 14 |  | Critical Design Review | 1w | 2012-08-04 | 2012-08-11 | 14d | as late as possible |
| 15 | 3 | **Production** | 12w | 2012-08-18 | 2012-11-10 |  | as late as possible |
| 16 |  | <New Task> | 1d | 2012-11-09 | 2012-11-10 |  |  |
| 17 | 4 | **Qualification testing** | 15w | 2012-11-15 | 2013-02-28 |  | as late as possible |
| 18 |  | Christmas | 3w | 2012-12-16 | 2013-01-06 |  |  |
| 19 | 5 | **Delivery and Launch** | 3.77w | 2013-02-02 | 2013-02-28 |  | as late as possible |
| 20 |  | <New Task> | 1d | 2013-02-27 | 2013-02-28 |  | as late as possible |

## Version 2 (saved 2012-01-21)

Note of the change: git-svn-id: svn+ssh://localhost/home/pcb/svn@76 265e18a8-33ca-405d-8757-c40a9e3cabe4

Last finish stays 2013-02-28.

Added:

| ID | Task | Duration | Start | Finish | Predecessors | Constraint | Resources |
| --- | --- | --- | --- | --- | --- | --- | --- |
| 9 | Namuru Evaluation | 7.05w | 2012-02-25 | 2012-04-14 |  | as late as possible | Executive |
| 11 | Software Application Level Dvelopment | 168.38d | 2012-02-25 | 2012-08-11 |  | as late as possible | Software Team |
| 12 | LTP development and testing | 168.38d | 2012-02-25 | 2012-08-11 |  | as late as possible | Software Team |
| 13 | Beaglebone L4 software development | 168.38d | 2012-01-28 | 2012-07-14 |  | as late as possible | Payload Team; Software Team |
| 14 | Beagle Bone design integration | 8w | 2012-02-25 | 2012-04-21 |  | as late as possible | PCB Team; Payload Team |
| 15 | Antennae Foothoold, Mounting and Material | 8w | 2012-03-24 | 2012-05-19 |  | as late as possible | Mechanical Team; Radio Team |
| 16 | Battery Charge design finalisation | 6w | 2012-05-05 | 2012-06-16 |  | as late as possible | Power Team |
| 17 | Wiring Harness Design | 4.05w | 2012-05-19 | 2012-06-16 |  | as late as possible | Mechanical Team; PCB Team |
| 19 | Tray 4 PCB Layout and Routing | 4w | 2012-07-14 | 2012-08-11 | 9, 14, 13 | as late as possible | PCB Team |
| 20 | Battery Mount Design | 1d? | 2012-08-10 | 2012-08-11 |  | as late as possible | Power Team |
| 21 | Solar Panel Routing and Mounting | 1d? | 2012-08-10 | 2012-08-11 |  | as late as possible | Power Team; Mechanical Team |
| 23 | Regulator and LDO characterisation | 3w | 2012-02-25 | 2012-03-17 |  | as late as possible | Testing Team |
| 24 | Communicaitions power characterisation | 3w | 2012-03-17 | 2012-04-07 |  | as late as possible | Testing Team |
| 25 | Telemetry testing and power characterisation | 3w | 2012-04-07 | 2012-04-28 |  | as late as possible | Testing Team |
| 26 | CSC power characterisation | 3w | 2012-06-16 | 2012-07-07 |  | as late as possible | Testing Team |
| 27 | Battery testing and charecterisation | 3w | 2012-06-30 | 2012-07-21 | 16 |  | Testing Team |
| 28 | Beagle Bone power charecterisation | 3w | 2012-07-21 | 2012-08-11 | 14 | as late as possible | Testing Team |
| 30 | Structural and Thermal model creation | 3w | 2012-01-14 | 2012-02-04 |  | as late as possible | Mechanical Team |
| 31 | Structural stress research and Investigation | 10w | 2012-02-04 | 2012-04-14 |  | as late as possible | Mechanical Team |
| 32 | Thermal Environmental research | 10w | 2012-02-04 | 2012-04-14 |  | as late as possible | Mechanical Team; Testing Team |
| 33 | Component thermal research | 3w | 2012-04-14 | 2012-05-05 |  | as late as possible | Mechanical Team |
| 34 | Final structural simulation | 4w | 2012-05-05 | 2012-06-02 |  | as late as possible | Mechanical Team |
| 35 | Final thermal simulation | 4w | 2012-06-02 | 2012-06-30 | 30, 32 | as late as possible | Mechanical Team |

Changed:

| ID | Task | Start | Finish | Duration | Total float | Predecessors | Other |
| --- | --- | --- | --- | --- | --- | --- | --- |
| 5 | **Integration Rig (Flatsat)** | 2012-01-14 → 2012-01-15 (+1d) | 2012-02-24 → 2012-02-25 (+1d) |  |  |  |  |
| 6 | <New Task> | 2012-02-24 → 2012-02-25 (+1d) | 2012-02-24 → 2012-02-25 (+1d) |  |  |  |  |
| 7 | **Feasbility Investigation** | 2012-07-21 → 2012-02-25 (-147d) | 2012-08-11 → 2012-04-14 (-119d) | 3w → 7.05w |  |  | resources none → Executive |
| 8 | Standalone Camera evaluation | 2012-08-10 → 2012-02-25 (-167d) | 2012-08-11 → 2012-04-14 (-119d) | 1d → 7.05w |  |  | was named <New Task>; resources none → Executive |
| 10 | **Design Finalisation** | 2012-07-21 → 2012-02-25 (-147d) |  | 3w → 24.05w |  | none → 5SS | resources none → Mechanical Team; Payload Team; PCB Team; Power Team; Radio Team; Software Team |
| 18 | Tray 2 PCB Layout and Routing | 2012-08-10 → 2012-06-16 (-55d) | 2012-08-11 → 2012-07-14 (-28d) | 1d → 4w |  | none → 17, 16 | was named <New Task>; resources none → PCB Team |
| 22 | **Testing and Evaluation** | 2012-07-21 → 2012-02-25 (-147d) |  | 3w → 24.05w |  |  |  |
| 29 | **Simulation** | 2012-07-21 → 2012-01-14 (-189d) |  | 3w → 30.05w |  |  |  |
| 36 | Critical Design Review |  |  |  | 14d → 203.38d |  | resources none → Executive |
| 37 | **Production** |  |  |  |  | none → 3 |  |
| 38 | PCB Manufacture | 2012-11-09 → 2012-08-18 (-83d) | 2012-11-10 → 2012-09-15 (-56d) | 1d → 4w |  |  | was named <New Task> |

## Version 3 (saved 2012-01-21)

Note of the change: Completed first draft of BLUEsatProjectPlan.mpp and printed to PDF

Last finish stays 2013-02-28.

Added:

| ID | Task | Duration | Start | Finish | Predecessors | Constraint | Resources |
| --- | --- | --- | --- | --- | --- | --- | --- |
| 6 | BCR Prototype creation and testing | 3w | 2012-01-14 | 2012-02-04 |  | as late as possible |  |
| 7 | Bus board routing | 3w | 2012-01-14 | 2012-02-04 |  | as late as possible |  |
| 8 | Rig Construction | 3w | 2012-02-04 | 2012-02-25 | 6, 7 | as late as possible |  |
| 9 | Communications Testing | 3w | 2012-02-04 | 2012-02-25 | 5, 8SS | as late as possible |  |
| 21 | Telemetry sensor mounting and distribution | 28.38d | 2012-04-21 | 2012-05-19 |  | as late as possible | PCB Team |
| 27 | Bent Pipe RF testing | 2w | 2012-02-25 | 2012-03-10 |  | as late as possible | Radio Team |
| 28 | Telecommand Testing | 6w | 2012-03-10 | 2012-04-21 |  | as late as possible | Radio Team |
| 39 | Model Touch up | 9w | 2012-04-14 | 2012-06-16 | 36, 37, 38 | as late as possible | Mechanical Team |
| 46 | Critical Systems Software Testing | 4w | 2012-08-18 | 2012-09-15 |  | as late as possible | Software Team |
| 47 | Communications Testing (Hardware Level) | 4w | 2012-08-18 | 2012-09-15 |  | as late as possible | Radio Team |
| 48 | Communications Testing (Software Level) | 4w | 2012-09-15 | 2012-10-13 | 46, 47 | as late as possible | Software Team; Radio Team |
| 49 | PCB Population | 6w | 2012-09-15 | 2012-10-27 | 45 | as late as possible | Payload Team; PCB Team; Power Team; Radio Team; Software Team; Testing Team |
| 50 | Telemetry testing and calibration | 4w | 2012-10-06 | 2012-11-03 | 49SS | as late as possible | PCB Team; Software Team |
| 51 | Satellite Assembly | 5w | 2012-09-29 | 2012-11-03 | 49SS | as late as possible | Mechanical Team; Payload Team; PCB Team; Power Team; Radio Team; Software Team; Testing Team |
| 52 | Test Readiness Review | 1w | 2012-11-03 | 2012-11-10 |  | as late as possible | Executive |
| 54 | Initial Functional Test | 1w | 2012-11-11 | 2012-11-18 |  | as late as possible |  |
| 55 | Thermal Cycling Test | 1w | 2012-11-18 | 2012-11-25 |  | as late as possible |  |
| 56 | Thermal Vacuum Testing Pt 1 | 3w | 2012-11-25 | 2012-12-16 |  | as late as possible |  |
| 58 | Thermal Vacuum Testing Pt 2 | 4.62w | 2013-01-06 | 2013-02-07 |  | as late as possible |  |
| 59 | Mechanical Testing | 1w | 2013-02-07 | 2013-02-14 |  | as late as possible |  |
| 60 | EMC and ESD testing | 1w | 2013-02-14 | 2013-02-21 |  | as late as possible |  |
| 61 | Final Functional Test | 1w | 2013-02-21 | 2013-02-28 |  | as late as possible |  |

Removed: 4 <New Task>

Changed:

| ID | Task | Start | Finish | Duration | Predecessors | Other |
| --- | --- | --- | --- | --- | --- | --- |
| 4 | **Integration Rig (Flatsat)** | 2012-01-15 → 2012-01-14 (-1d) |  | 41.38d → 6w |  | resources none → Executive; Payload Team; PCB Team; Power Team; Radio Team; Software Team; Testing Team |
| 5 | Driver Development | 2012-02-25 → 2012-01-14 (-42d) | 2012-02-25 → 2012-02-04 (-21d) | 0.33d → 3w |  | was named <New Task> |
| 16 | Beaglebone L4 software development | 2012-01-28 → 2012-02-25 (+28d) | 2012-07-14 → 2012-08-11 (+28d) |  |  |  |
| 18 | Battery Charge design finalisation | 2012-05-05 → 2012-02-25 (-70d) | 2012-06-16 → 2012-04-21 (-56d) | 6w → 8w |  |  |
| 20 | Solar Panel Routing and Mounting | 2012-08-10 → 2012-04-06 (-126d) | 2012-08-11 → 2012-05-19 (-84d) | 1d? → 42.38d |  |  |
| 22 | Wiring Harness Design |  |  |  | none → 20 |  |
| 23 | Battery Mount Design | 2012-08-10 → 2012-05-19 (-83d) | 2012-08-11 → 2012-06-30 (-42d) | 1d? → 6w | none → 20 | resources Power Team → Power Team; Mechanical Team |
| 25 | Tray 4 PCB Layout and Routing |  |  |  | 12, 17, 16 → 12, 17 |  |
| 26 | **Testing and Evaluation** |  |  |  |  | resources none → Testing Team; Radio Team |
| 29 | Regulator and LDO characterisation |  | 2012-03-17 → 2012-03-24 (+7d) | 3w → 4w |  |  |
| 30 | Communicaitions power characterisation | 2012-03-17 → 2012-03-24 (+7d) | 2012-04-07 → 2012-04-21 (+14d) | 3w → 4w |  |  |
| 31 | Telemetry testing and power characterisation | 2012-04-07 → 2012-04-21 (+14d) | 2012-04-28 → 2012-05-19 (+21d) | 3w → 4w |  |  |
| 32 | CSC power characterisation | 2012-06-16 → 2012-05-19 (-28d) | 2012-07-07 → 2012-06-16 (-21d) | 3w → 4w |  |  |
| 33 | Battery testing and charecterisation | 2012-06-30 → 2012-06-16 (-14d) | 2012-07-21 → 2012-07-14 (-7d) | 3w → 4w |  |  |
| 34 | Beagle Bone power charecterisation | 2012-07-21 → 2012-07-07 (-14d) | 2012-08-11 → 2012-08-04 (-7d) | 3w → 4w |  |  |
| 35 | **Simulation** |  |  |  |  | resources none → Mechanical Team |
| 40 | Component thermal research | 2012-04-14 → 2012-06-16 (+63d) | 2012-05-05 → 2012-07-07 (+63d) |  | none → 29, 30, 31, 32 |  |
| 41 | Final structural simulation | 2012-05-05 → 2012-07-07 (+63d) | 2012-06-02 → 2012-08-04 (+63d) |  | none → 39, 37 |  |
| 42 | Final thermal simulation | 2012-06-02 → 2012-07-07 (+35d) | 2012-06-30 → 2012-08-04 (+35d) |  | 36, 38 → 38, 40, 39 |  |
| 44 | **Production and Final Functional Testing** |  |  |  | 3 → none | was named Production; resources none → Executive; External; Mechanical Team; Payload Team; PCB Team; Power Team; Radio Team; Software Team; Testing Team |
| 45 | PCB Manufacture |  |  |  | none → 24, 25 | resources none → External |
| 53 | **Qualification testing** | 2012-11-15 → 2012-11-10 (-5d) |  | 15w → 15.77w |  |  |

## Version 4 (saved 2012-01-28)

Note of the change: added uni calendar to BLUEsatProjectPlan.mpp

Last finish stays 2013-02-28.

Added:

| ID | Task | Duration | Start | Finish | Predecessors | Constraint | Resources |
| --- | --- | --- | --- | --- | --- | --- | --- |
| 4 | Amateur Radio Licensing - Preparation and Testing | 6w | 2012-01-28 | 2012-03-10 |  | as late as possible |  |
| 25 | Wiring Harness | 4.05w | 2012-06-16 | 2012-07-14 | 23, 21 |  | PCB Team |
| 36 | Solar BCR integration testing | 4w | 2012-07-14 | 2012-08-11 | 19 | as late as possible | Power Team |
| 47 | Sourcing and Ordering of Components | 4w | 2012-08-18 | 2012-09-15 |  | as late as possible |  |
| 55 | Generation of Final Function Test Specifications | 3w | 2012-10-20 | 2012-11-10 | 50, 51 | as late as possible | External |
| 69 | **Uni Timetable** | 411.38d | 2012-01-14 | 2013-02-28 |  | as late as possible |  |
| 70 | Summer Semester Stuvac | 5.38d | 2012-01-28 | 2012-02-02 |  | as late as possible |  |
| 71 | Summer Semester Exams | 8.38d | 2012-02-03 | 2012-02-11 |  | as late as possible |  |
| 72 | Semester 1 First Half | 39.38d | 2012-02-27 | 2012-04-06 |  | as late as possible |  |
| 73 | Semester 1 Second Half | 46.38d | 2012-04-16 | 2012-06-01 |  | as late as possible |  |
| 74 | Semester 1 Stuvac | 5.38d | 2012-06-02 | 2012-06-07 |  | as late as possible |  |
| 75 | Semester 1 Exams | 17.38d | 2012-06-08 | 2012-06-25 |  | as late as possible |  |
| 76 | Semester 2 First Half | 6.77w | 2012-07-16 | 2012-09-01 |  | as late as possible |  |
| 77 | Semester 2 Second Half | 5.77w | 2012-09-09 | 2012-10-19 |  | as late as possible |  |
| 78 | Semester 2 Stuvac | 5.38d | 2012-10-20 | 2012-10-25 |  | as late as possible |  |
| 79 | Semester 2 Exams | 18.38d | 2012-10-26 | 2012-11-13 |  | as late as possible |  |

Removed: 22 Wiring Harness Design

Changed:

| ID | Task | Start | Finish | Duration | Predecessors | Other |
| --- | --- | --- | --- | --- | --- | --- |
| 19 | Battery Charge design finalisation | 2012-02-25 → 2012-03-24 (+28d) | 2012-04-21 → 2012-05-19 (+28d) |  |  |  |
| 20 | Antennae Foothold, Mounting and Material |  |  |  |  | was named Antennae Foothoold, Mounting and Material |
| 23 | Tray 2 PCB Layout and Routing | 2012-06-16 → 2012-05-18 (-29d) | 2012-07-14 → 2012-06-16 (-28d) | 4w → 4.05w | Wiring Harness Design, 19 → 21, 19 | constraint none → as late as possible; resources PCB Team → Mechanical Team; PCB Team |
| 27 | **Testing, Simulation and Evaluation - Electrical** |  |  |  |  | was named Testing and Evaluation |
| 37 | **Simulation - Mechanical** |  |  |  |  | was named Simulation |
| 48 | PCB Manufacture |  |  |  | 23, 26 → 25, 26 |  |
| 51 | Communications Testing (Software Level) | 2012-09-15 → 2012-09-22 (+7d) | 2012-10-13 → 2012-10-20 (+7d) |  |  |  |
| 52 | PCB Population |  |  |  |  | resources Payload Team; PCB Team; Power Team; Radio Team; Software Team; Testing Team → Payload Team; PCB Team; Power Team; Radio Team; External; Testing Team |
| 61 | Christmas |  |  |  |  | resources none → Executive; External; Mechanical Team; Payload Team; PCB Team; Power Team; Radio Team; Software Team; Testing Team |

## Version 5 (saved 2012-02-25)

Note of the change: added progress updates folder

Last finish stays 2013-02-28.

Changed:

| ID | Task | Start | Duration |
| --- | --- | --- | --- |
| 19 | Battery Charge design finalisation | 2012-03-24 → 2012-02-25 (-28d) | 8w → 12w |

## Version 6 (saved 2012-06-02)

Note of the change: updated gantt chart, added version v1.1

Last finish stays 2013-02-28. Complete tasks 0 → 15.

Removed: 16 LTP development and testing

Changed:

| ID | Task | Start | Finish | Duration | Complete |
| --- | --- | --- | --- | --- | --- |
| 3 | **Design, Testing and Analysis** | 2012-01-14 A |  |  | 0% → 68% |
| 4 | Amateur Radio Licensing - Preparation and Testing | 2012-01-28 A | 2012-03-10 → 2012-07-31 (+143d) | 6w → 26.43w | 0% → 75% |
| 5 | **Integration Rig (Flatsat)** | 2012-01-14 A |  |  | 0% → 99% |
| 6 | Driver Development | 2012-01-14 A | 2012-02-04 A |  | 0% → 100% |
| 7 | BCR Prototype creation and testing | 2012-01-14 A | 2012-02-04 A |  | 0% → 100% |
| 8 | Bus board routing | 2012-01-14 A | 2012-02-04 A |  | 0% → 100% |
| 9 | Rig Construction | 2012-02-04 A | 2012-02-25 A |  | 0% → 100% |
| 10 | Communications Testing | 2012-02-04 A | 2012-02-25 A |  | 0% → 100% |
| 11 | **Feasbility Investigation** | 2012-02-25 A |  |  | 0% → 99% |
| 12 | Standalone Camera evaluation | 2012-02-25 A | 2012-04-14 A |  | 0% → 100% |
| 13 | Namuru Evaluation | 2012-02-25 A | 2012-04-14 A |  | 0% → 100% |
| 14 | **Design Finalisation** | 2012-02-25 A |  |  | 0% → 57% |
| 15 | Software Application Level Dvelopment | 2012-02-25 A |  |  | 0% → 80% |
| 16 | Beaglebone L4 software development | 2012-02-25 A |  |  | 0% → 25% |
| 17 | Beagle Bone design integration | 2012-02-25 A |  |  | 0% → 50% |
| 18 | Battery Charge design finalisation | 2012-02-25 A | 2012-05-19 → 2012-06-30 (+42d) | 12w → 18.05w | 0% → 75% |
| 19 | Antennae Foothold, Mounting and Material | 2012-03-24 → 2012-06-30 A (+98d) | 2012-05-19 → 2012-07-28 (+70d) | 8w → 4w | 0% → 50% |
| 20 | Solar Panel Routing and Mounting | 2012-04-06 A | 2012-05-19 A |  | 0% → 100% |
| 21 | Telemetry sensor mounting and distribution | 2012-04-21 A | 2012-05-19 A |  | 0% → 100% |
| 22 | Tray 2 PCB Layout and Routing | 2012-05-18 → 2012-05-19 A (+1d) | 2012-06-16 → 2012-07-28 (+42d) | 4.05w → 10w | 0% → 40% |
| 23 | Battery Mount Design | 2012-05-19 → 2012-05-05 A (-14d) | 2012-06-30 → 2012-07-28 (+28d) | 6w → 12w | 0% → 50% |
| 24 | Wiring Harness | 2012-06-16 → 2012-06-30 A (+14d) | 2012-07-14 → 2012-07-28 (+14d) |  | 0% → 50% |
| 25 | Tray 4 PCB Layout and Routing | 2012-07-14 A |  |  | 0% → 25% |
| 26 | **Testing, Simulation and Evaluation - Electrical** | 2012-02-25 A |  |  | 0% → 71% |
| 27 | Bent Pipe RF testing | 2012-02-25 A | 2012-03-10 A |  | 0% → 100% |
| 28 | Telecommand Testing | 2012-03-10 → 2012-03-17 A (+7d) | 2012-04-21 → 2012-06-09 (+49d) | 6w → 12w | 0% → 90% |
| 29 | Regulator and LDO characterisation | 2012-02-25 A | 2012-03-24 A |  | 0% → 100% |
| 30 | Communicaitions power characterisation | 2012-03-24 A | 2012-04-21 A |  | 0% → 100% |
| 31 | Telemetry testing and power characterisation | 2012-04-21 A |  |  | 0% → 50% |
| 32 | CSC power characterisation | 2012-05-19 A |  |  | 0% → 50% |
| 33 | Battery testing and charecterisation | 2012-06-16 A |  |  | 0% → 75% |
| 35 | Solar BCR integration testing | 2012-07-14 A |  |  | 0% → 50% |
| 36 | **Simulation - Mechanical** | 2012-01-14 A |  |  | 0% → 66% |
| 37 | Structural and Thermal model creation | 2012-01-14 A | 2012-02-04 A |  | 0% → 100% |
| 38 | Structural stress research and Investigation | 2012-02-04 A | 2012-04-14 A |  | 0% → 100% |
| 39 | Thermal Environmental research | 2012-02-04 A | 2012-04-14 A |  | 0% → 100% |
| 40 | Model Touch up | 2012-04-14 A |  |  | 0% → 50% |
| 41 | Component thermal research | 2012-06-16 A |  |  | 0% → 50% |

## Version 7 (saved 2012-06-09)

Note of the change: updated project plan

Last finish stays 2013-02-28. Complete tasks 15 → 16.

Added:

| ID | Task | Duration | Start | Finish | Constraint | Resources |
| --- | --- | --- | --- | --- | --- | --- |
| 26 | Power System Redesign | 3w | 2012-06-09 | 2012-06-30 | as late as possible | PCB Team |

Changed:

| ID | Task | Start | Finish | Duration | Complete | Total float | Other |
| --- | --- | --- | --- | --- | --- | --- | --- |
| 3 | **Design, Testing and Analysis** |  |  |  | 68% → 67% |  |  |
| 14 | **Design Finalisation** |  |  |  | 57% → 56% |  |  |
| 15 | Software Application Level Development |  |  |  |  |  | was named Software Application Level Dvelopment |
| 37 | **Simulation - Mechanical** |  |  |  | 66% → 68% |  |  |
| 42 | Component thermal research |  | 2012-07-07 A |  | 50% → 100% |  |  |
| 45 | Critical Design Review | 2012-08-04 → 2012-05-26 (-70d) |  | 1w → 1.91w |  | 203.38d → 133d |  |
